# 自动驾驶管理系统

Schedule from a web Gantt chart, 2026-03-25 to 2026-03-25.
Saturdays and Sundays are off

## Schedule

| ID | WBS | Task | Duration | Start | Finish |
| --- | --- | --- | --- | --- | --- |
| 2 | 1 | **AVP平台** | 1d | 2026-03-25 | 2026-03-25 |
| 3 | 1.1 | **代客泊车预约系统 （移动端）** | 1d | 2026-03-25 | 2026-03-25 |
| 4 | 1.1.1 | **首页** | 1d | 2026-03-25 | 2026-03-25 |
| 5 | 1.1.1.1 | 登录注册 | 1d | 2026-03-25 | 2026-03-25 |
| 6 | 1.1.1.2 | 用户定位展示 | 1d | 2026-03-25 | 2026-03-25 |
| 7 | 1.1.1.3 | 车辆定位展示 | 1d | 2026-03-25 | 2026-03-25 |
| 8 | 1.1.1.4 | 停车场分布展示 | 1d | 2026-03-25 | 2026-03-25 |
| 9 | 1.1.1.5 | 车辆状态展示 | 1d | 2026-03-25 | 2026-03-25 |
| 10 | 1.1.1.6 | 一键泊车 | 1d | 2026-03-25 | 2026-03-25 |
| 11 | 1.1.1.7 | 一键召车 | 1d | 2026-03-25 | 2026-03-25 |
| 12 | 1.1.1.8 | 过程跟踪 | 1d | 2026-03-25 | 2026-03-25 |
| 13 | 1.1.2 | **个人中心** | 1d | 2026-03-25 | 2026-03-25 |
| 14 | 1.1.2.1 | 车辆管理 | 1d | 2026-03-25 | 2026-03-25 |
| 15 | 1.1.2.2 | 预警管理 | 1d | 2026-03-25 | 2026-03-25 |
| 16 | 1.1.2.3 | 泊车记录 | 1d | 2026-03-25 | 2026-03-25 |
| 17 | 1.1.2.4 | 召车记录 | 1d | 2026-03-25 | 2026-03-25 |
| 18 | 1.2 | **代客泊车管理系统 （web端）** | 1d | 2026-03-25 | 2026-03-25 |
| 19 | 1.2.1 | **首页概要** | 1d | 2026-03-25 | 2026-03-25 |
| 20 | 1.2.1.1 | 停车场统计信息 | 1d | 2026-03-25 | 2026-03-25 |
| 21 | 1.2.1.2 | 客户统计信息 | 1d | 2026-03-25 | 2026-03-25 |
| 22 | 1.2.1.3 | 车辆统计信息 | 1d | 2026-03-25 | 2026-03-25 |
| 23 | 1.2.1.4 | 停车场3D可视化 | 1d | 2026-03-25 | 2026-03-25 |
| 24 | 1.2.1.5 | 可预约车位信息 | 1d | 2026-03-25 | 2026-03-25 |
| 25 | 1.2.1.6 | 在场AVP车辆信息 | 1d | 2026-03-25 | 2026-03-25 |
| 26 | 1.2.1.7 | 在场AVP车辆预警信息 | 1d | 2026-03-25 | 2026-03-25 |
| 27 | 1.2.2 | 预约管理 | 1d | 2026-03-25 | 2026-03-25 |

| ID | WBS | Task | Duration | Start | Finish |
| --- | --- | --- | --- | --- | --- |
| 28 | 1.2.3 | **场端管理** | 1d | 2026-03-25 | 2026-03-25 |
| 29 | 1.2.3.1 | 停车场管理 | 1d | 2026-03-25 | 2026-03-25 |
| 30 | 1.2.3.2 | 出入口管理 | 1d | 2026-03-25 | 2026-03-25 |
| 31 | 1.2.3.3 | 停车楼层管理 | 1d | 2026-03-25 | 2026-03-25 |
| 32 | 1.2.3.4 | 停车区域管理 | 1d | 2026-03-25 | 2026-03-25 |
| 33 | 1.2.3.5 | 停车位管理 | 1d | 2026-03-25 | 2026-03-25 |
| 34 | 1.2.3.6 | 道闸管理 | 1d | 2026-03-25 | 2026-03-25 |
| 35 | 1.2.4 | 地图管理 | 1d | 2026-03-25 | 2026-03-25 |
| 36 | 1.3 | 信息服务系统 （web端） | 1d | 2026-03-25 | 2026-03-25 |
| 37 | 1.4 | 应用管理系统 （web端） | 1d | 2026-03-25 | 2026-03-25 |
